# Project 0.1

Schedule from MS Project, 2017-08-02 to 2017-08-31, costs in S/., A marks actual dates.

## Calendars

- Estándar: Mon-Fri 09:00-13:00, 15:00-19:00; Sat-Sun off. Exceptions (off unless hours are given): 2017-08-05 to 2017-08-06 09:00-13:00, 15:00-19:00.

## Resources

| Resource | Rate |
| --- | --- |
| GESTOR DE PROYECTO | 50 |
| LÍDER TÉCNICO | 30 |
| ANALISTA | 20 |
| DISEÑADOR | 15 |
| PROGRAMADOR | 10 |
| EQUIPO DE TRABAJO |  |
| TESTER |  |
| CLIENTE |  |

## Schedule

| ID | WBS | Task | Type | Duration | Start | Finish | Predecessors | Complete | Remaining | Total slack | Constraint | Resources | Work | Actual work | Cost | Actual cost |
| --- | --- | --- | --- | --- | --- | --- | --- | --- | --- | --- | --- | --- | --- | --- | --- | --- |
| 1 | 1 | **Sistema de Gestión de Vehículos Pesados** |  | 23d? | 2017-08-02 A | 2017-08-31 |  | 60% | 9.2d? | 0d |  |  | 208h | 146.79h | 6,640 | 5,309.91 |
| 2 | 1.1 | **Gestión de Proyecto** |  | 23d? | 2017-08-02 A | 2017-08-31 |  | 87% | 2.93d? | 0d |  |  | 120h | 110.4h | 5,040 | 4,656 |
| 3 | 1.1.1 | **Planeación del Proyecto** |  | 23d | 2017-08-02 A | 2017-08-31 A |  | 100% |  |  |  |  | 56h | 56h | 2,480 | 2,480 |
| 4 | 1.1.1.1 | **Acta de Reunión 1** |  | 0d | 2017-08-02 A | 2017-08-02 A |  | 100% |  |  |  |  |  |  |  |  |
| 5 | 1.1.1.1.1 | Evaluar los contactos y selección de empresa | milestone | 0d | 2017-08-02 A | 2017-08-02 A |  | 100% |  |  |  | EQUIPO DE TRABAJO |  |  |  |  |
| 6 | 1.1.1.1.2 | Asignar Roles del Equipo de Trabajo | milestone | 0d | 2017-08-02 A | 2017-08-02 A | 5 | 100% |  |  |  | EQUIPO DE TRABAJO |  |  |  |  |
| 7 | 1.1.1.2 | **Acta de Reunión 2** |  | 0d | 2017-08-03 A | 2017-08-03 A |  | 100% |  |  |  |  |  |  |  |  |
| 8 | 1.1.1.2.1 | Primera Reunión con el cliente | milestone | 0d | 2017-08-03 A | 2017-08-03 A | 4 | 100% |  |  | start no earlier than 2017-08-03 | GESTOR DE PROYECTO |  |  |  |  |
| 9 | 1.1.1.2.2 | Analizar el proceso de negocio | milestone | 0d | 2017-08-03 A | 2017-08-03 A | 8 | 100% |  |  |  | ANALISTA |  |  |  |  |
| 10 | 1.1.1.2.3 | Seleccionar y analizar proceso crítico | milestone | 0d | 2017-08-03 A | 2017-08-03 A | 9 | 100% |  |  |  | ANALISTA; EQUIPO DE TRABAJO |  |  |  |  |
| 11 | 1.1.1.3 | **Acta de Reunión 3** |  | 0d | 2017-08-05 A | 2017-08-05 A |  | 100% |  |  |  |  |  |  |  |  |
| 12 | 1.1.1.3.1 | Crear Repositorio y Backup del Repositorio del Proyecto | milestone | 0d | 2017-08-05 A | 2017-08-05 A | 7 | 100% |  |  | start no earlier than 2017-08-05 | GESTOR DE PROYECTO; LÍDER TÉCNICO |  |  |  |  |
| 13 | 1.1.1.3.2 | Elaborar documento del Repositorio del Proyecto | milestone | 0d | 2017-08-05 A | 2017-08-05 A | 12 | 100% |  |  | start no earlier than 2017-08-05 | GESTOR DE PROYECTO; LÍDER TÉCNICO |  |  |  |  |
| 14 | 1.1.1.3.3 | Verificar documento del Repositorio del Proyecto | milestone | 0d | 2017-08-05 A | 2017-08-05 A | 13 | 100% |  |  | start no earlier than 2017-08-05 | GESTOR DE PROYECTO |  |  |  |  |
| 15 | 1.1.1.3.4 | Definir Alcance del Proyecto | milestone | 0d | 2017-08-05 A | 2017-08-05 A | 14 | 100% |  |  |  | EQUIPO DE TRABAJO |  |  |  |  |
| 16 | 1.1.1.4 | Estructurar Ms Project | milestone | 0d | 2017-08-06 A | 2017-08-06 A | 7 | 100% |  |  | start no earlier than 2017-08-06 | GESTOR DE PROYECTO; LÍDER TÉCNICO |  |  |  |  |
| 17 | 1.1.1.5 | **Elaborar Enunciado de Trabajo** |  | 12d | 2017-08-07 A | 2017-08-23 A |  | 100% |  |  |  |  | 56h | 56h | 2,480 | 2,480 |
| 18 | 1.1.1.5.1 | Elaborar Enunciado de Trabajo |  | 2d | 2017-08-07 A | 2017-08-08 A | 7, 16 | 100% |  |  | start no earlier than 2017-08-07 | GESTOR DE PROYECTO; LÍDER TÉCNICO | 32h | 32h | 1,280 | 1,280 |
| 19 | 1.1.1.5.2 | Verificar Enunciado de Trabajo |  | 1d | 2017-08-09 A | 2017-08-09 A | 18 | 100% |  |  | start no earlier than 2017-08-09 | GESTOR DE PROYECTO | 8h | 8h | 400 | 400 |
| 20 | 1.1.1.5.3 | Actualizar Enunciado de Trabajo |  | 2d | 2017-08-16 A | 2017-08-17 A | 19 | 100% |  |  | start no earlier than 2017-08-16 | GESTOR DE PROYECTO; LÍDER TÉCNICO | 16h | 16h | 800 | 800 |
| 21 | 1.1.1.5.4 | Verificar Actualización de Enunciado de Trabajo | milestone | 0d | 2017-08-23 A | 2017-08-23 A | 20 | 100% |  |  |  | GESTOR DE PROYECTO |  |  |  |  |
| 22 | 1.1.1.6 | **Acta de Reunion 4** |  | 0d | 2017-08-18 A | 2017-08-18 A |  | 100% |  |  |  |  |  |  |  |  |
| 23 | 1.1.1.6.1 | Asignar tareas según roles | milestone | 0d | 2017-08-18 A | 2017-08-18 A |  | 100% |  |  | start no earlier than 2017-08-18 | GESTOR DE PROYECTO |  |  |  |  |
| 24 | 1.1.1.6.2 | Elaborar el modelo de caso de uso | milestone | 0d | 2017-08-18 A | 2017-08-18 A |  | 100% |  |  | start no earlier than 2017-08-18 | ANALISTA; DISEÑADOR |  |  |  |  |
| 25 | 1.1.1.6.3 | Verificación y actualización del Ms Project | milestone | 0d | 2017-08-18 A | 2017-08-18 A | 11 | 100% |  |  | start no earlier than 2017-08-18 | GESTOR DE PROYECTO |  |  |  |  |
| 26 | 1.1.1.6.4 | Verificar Enunciado de Trabajo | milestone | 0d | 2017-08-18 A | 2017-08-18 A | 11 | 100% |  |  | start no earlier than 2017-08-18 | EQUIPO DE TRABAJO |  |  |  |  |

| ID | WBS | Task | Type | Duration | Start | Finish | Predecessors | Complete | Remaining | Total slack | Free slack | Constraint | Resources | Work | Actual work | Cost | Actual cost |
| --- | --- | --- | --- | --- | --- | --- | --- | --- | --- | --- | --- | --- | --- | --- | --- | --- | --- |
| 27 | 1.1.1.7 | **Acta de Reunion 5** |  | 0d | 2017-08-31 A | 2017-08-31 A |  | 100% |  |  |  |  |  |  |  |  |  |
| 28 | 1.1.1.7.1 | Validar enunciado de trabajo | milestone | 0d | 2017-08-31 A | 2017-08-31 A | 17 | 100% |  |  |  | start no earlier than 2017-08-31 | GESTOR DE PROYECTO; CLIENTE |  |  |  |  |
| 29 | 1.1.1.7.2 | Validar plan de proyecto | milestone | 0d | 2017-08-31 A | 2017-08-31 A | 31 | 100% |  |  |  | start no earlier than 2017-08-31 | GESTOR DE PROYECTO; CLIENTE |  |  |  |  |
| 30 | 1.1.2 | **Ejecución del Plan de Proyecto** |  | 4.32d | 2017-08-21 A | 2017-08-25 |  | 85% | 0.65d | 3.25d |  |  |  | 64h | 54.4h | 2,560 | 2,176 |
| 31 | 1.1.2.1 | **Elaborar Plan de Proyecto** |  | 4.32d | 2017-08-21 A | 2017-08-25 |  | 85% | 0.65d | 3.25d | 0d |  |  | 64h | 54.4h | 2,560 | 2,176 |
| 32 | 1.1.2.1.1 | Elaborar Plan de Proyecto |  | 4d | 2017-08-21 A | 2017-08-23 |  | 85% | 0.6d | 5.25d | 2d | finish no earlier than 2017-08-23 | GESTOR DE PROYECTO; LÍDER TÉCNICO | 64h | 54.4h | 2,560 | 2,176 |
| 33 | 1.1.2.1.2 | Verificar Plan de Proyecto | milestone | 0d | 2017-08-25 | 2017-08-25 | 32 |  |  | 3.25d |  | finish no earlier than 2017-08-25 | GESTOR DE PROYECTO |  |  |  |  |
| 34 | 1.1.3 | **Evaluación y Control del Proyecto** |  | 0d | 2017-08-24 | 2017-08-24 |  |  |  | 5d |  |  |  |  |  |  |  |
| 35 | 1.1.3.1 | Elaborar Documento Reporte de Avances | milestone | 0d | 2017-08-24 | 2017-08-24 |  |  |  | 5d |  | start no earlier than 2017-08-24 | GESTOR DE PROYECTO |  |  |  |  |
| 36 | 1.1.4 | Cierre del Proyecto | manual | 0.62d? | 2017-08-02 | 2017-08-02 |  |  |  |  |  |  |  |  |  |  |  |
| 37 | 1.2 | **Implementacion de Software** |  | 5d? | 2017-08-19 A | 2017-08-26 |  | 30% | 3.48d? | 3d |  |  |  | 88h | 36.4h | 1,600 | 653.91 |
| 38 | 1.2.1 | **Inicio de Implementación de Software** |  | 0d | 2017-08-25 | 2017-08-25 |  |  |  | 3.25d |  |  |  |  |  |  |  |
| 39 | 1.2.1.1 | Revisar Plan de Proyecto | milestone | 0d | 2017-08-25 | 2017-08-25 | 31 |  |  | 3.25d | 0d | start no earlier than 2017-08-24 |  |  |  |  |  |
| 40 | 1.2.1.2 | Asignar Roles de acuerdo al Plan de Proyecto | milestone | 0d | 2017-08-25 | 2017-08-25 | 39 |  |  | 3.25d |  | start no earlier than 2017-08-25 |  |  |  |  |  |
| 41 | 1.2.2 | **Análisis de Requisitos de Software** |  | 5d | 2017-08-19 A | 2017-08-26 |  | 45% | 2.75d | 3d |  |  |  | 72h | 36.4h | 1,320 | 653.91 |
| 42 | 1.2.2.1 | **Elaborar el MCU** |  | 2.75d | 2017-08-19 A | 2017-08-23 A |  | 100% |  |  |  |  |  | 16h | 16h | 280 | 280 |
| 43 | 1.2.2.1.1 | Diseñar y Estructurar el Modelo de Casos de Uso |  | 1d | 2017-08-19 A | 2017-08-23 A | 17, 31 | 100% |  |  |  | finish no earlier than 2017-08-23 | ANALISTA; DISEÑADOR | 16h | 16h | 280 | 280 |
| 44 | 1.2.2.2 | **Elaborar Documento Especificación de Casos de Uso** |  | 2d | 2017-08-24 A | 2017-08-25 |  | 28% | 1.43d | 0d |  |  |  | 24h | 6.8h | 480 | 135.97 |
| 45 | 1.2.2.2.1 | Elaborar la Especificación de los Casos de Uso |  | 3d | 2017-08-24 A | 2017-08-25 | 43, 47 | 28% | 2.15d | 0d |  |  | ANALISTA | 24h | 6.8h | 480 | 135.97 |
| 46 | 1.2.2.3 | **Elaborar Especificación de Requisitos** |  | 2d | 2017-08-24 A | 2017-08-26 |  | 42% | 1.15d | 3d |  |  |  | 32h | 13.6h | 560 | 237.94 |
| 47 | 1.2.2.3.1 | Elaborar Priorización de Casos de Uso | milestone | 0d | 2017-08-24 A | 2017-08-24 A | 43 | 100% |  |  |  |  | ANALISTA |  |  |  |  |
| 48 | 1.2.2.3.2 | Elaborar Documento de SRS |  | 2d | 2017-08-24 A | 2017-08-26 | 45 | 42% | 1.15d | 3d |  |  | ANALISTA; DISEÑADOR | 32h | 13.6h | 560 | 237.94 |
| 49 | 1.2.2.3.3 | Verificar Documento de SRS | milestone | 0d | 2017-08-25 A | 2017-08-25 A | 48 | 100% |  |  |  |  | ANALISTA; GESTOR DE PROYECTO |  |  |  |  |
| 50 | 1.2.3 | **Arquitectura y Diseño Detallado de Software** |  | 0.94d | 2017-08-25 | 2017-08-25 |  |  |  | 3.06d |  |  |  | 16h |  | 280 |  |
| 51 | 1.2.3.1 | Elaborar Registro de Trazabilidad |  | 1d | 2017-08-25 | 2017-08-25 |  |  |  | 3.06d |  | start no earlier than 2017-08-25 | ANALISTA; DISEÑADOR | 16h |  | 280 |  |
| 52 | 1.2.4 | Construcción de Software | manual | 0.62d? | 2017-08-19 | 2017-08-19 |  |  |  |  |  |  |  |  |  |  |  |
| 53 | 1.2.5 | Integración y Pruebas de Software | manual | 0.62d? | 2017-08-19 | 2017-08-19 |  |  |  |  |  |  |  |  |  |  |  |
| 54 | 1.2.6 | Entrega de Productos | manual | 0.62d? | 2017-08-19 | 2017-08-19 |  |  |  |  |  |  |  |  |  |  |  |
