# Project v0.5

Schedule from MS Project, 2017-08-02 to 2017-09-25, costs in S/., A marks actual dates.

## Calendars

- Estándar: Mon-Fri 09:00-13:00, 15:00-19:00; Sat-Sun off. Exceptions (off unless hours are given): 2017-08-05 to 2017-08-06 09:00-13:00, 15:00-19:00, 2017-08-19 09:00-13:00, 15:00-19:00.

## Resources

| Resource | Rate |
| --- | --- |
| GESTOR DE PROYECTO | 50 |
| LÍDER TÉCNICO | 30 |
| ANALISTA | 20 |
| DISEÑADOR | 15 |
| PROGRAMADOR | 10 |
| EQUIPO DE TRABAJO |  |
| TESTER |  |
| CLIENTE |  |

## Schedule

| ID | WBS | Task | Type | Duration | Start | Finish | Predecessors | Complete | Remaining | Total slack | Constraint | Resources | Work | Actual work | Cost | Actual cost |
| --- | --- | --- | --- | --- | --- | --- | --- | --- | --- | --- | --- | --- | --- | --- | --- | --- |
| 1 | 1 | **Sistema de Gestión de Vehículos Pesados** |  | 41d? | 2017-08-02 A | 2017-09-25 |  | 75% | 10.44d? | 0d |  |  | 617.7h | 617.7h | 14,145.52 | 14,145.52 |
| 2 | 1.1 | **Gestión de Proyecto** |  | 41d? | 2017-08-02 A | 2017-09-25 |  | 83% | 6.83d? | 0d |  |  | 136h | 136h | 5,680 | 5,680 |
| 3 | 1.1.1 | **Planeación del Proyecto** |  | 38d | 2017-08-02 A | 2017-09-20 A |  | 100% |  |  |  |  | 56h | 56h | 2,480 | 2,480 |
| 4 | 1.1.1.1 | **Acta de Reunión 1** |  | 0d | 2017-08-02 A | 2017-08-02 A |  | 100% |  |  |  |  |  |  |  |  |
| 5 | 1.1.1.1.1 | Evaluar los contactos y selección de empresa | milestone | 0d | 2017-08-02 A | 2017-08-02 A |  | 100% |  |  |  | EQUIPO DE TRABAJO |  |  |  |  |
| 6 | 1.1.1.1.2 | Asignar Roles del Equipo de Trabajo | milestone | 0d | 2017-08-02 A | 2017-08-02 A | 5 | 100% |  |  |  | EQUIPO DE TRABAJO |  |  |  |  |
| 7 | 1.1.1.2 | **Acta de Reunión 2** |  | 0d | 2017-08-03 A | 2017-08-03 A |  | 100% |  |  |  |  |  |  |  |  |
| 8 | 1.1.1.2.1 | Primera Reunión con el cliente | milestone | 0d | 2017-08-03 A | 2017-08-03 A | 4 | 100% |  |  | start no earlier than 2017-08-03 | GESTOR DE PROYECTO |  |  |  |  |
| 9 | 1.1.1.2.2 | Analizar el proceso de negocio | milestone | 0d | 2017-08-03 A | 2017-08-03 A | 8 | 100% |  |  |  | ANALISTA |  |  |  |  |
| 10 | 1.1.1.2.3 | Seleccionar y analizar proceso crítico | milestone | 0d | 2017-08-03 A | 2017-08-03 A | 9 | 100% |  |  |  | ANALISTA; EQUIPO DE TRABAJO |  |  |  |  |
| 11 | 1.1.1.3 | **Acta de Reunión 3** |  | 0d | 2017-08-05 A | 2017-08-05 A |  | 100% |  |  |  |  |  |  |  |  |
| 12 | 1.1.1.3.1 | Crear Repositorio y Backup del Repositorio del Proyecto | milestone | 0d | 2017-08-05 A | 2017-08-05 A | 7 | 100% |  |  | start no earlier than 2017-08-05 | GESTOR DE PROYECTO; LÍDER TÉCNICO |  |  |  |  |
| 13 | 1.1.1.3.2 | Elaborar documento del Repositorio del Proyecto | milestone | 0d | 2017-08-05 A | 2017-08-05 A | 12 | 100% |  |  | start no earlier than 2017-08-05 | GESTOR DE PROYECTO; LÍDER TÉCNICO |  |  |  |  |
| 14 | 1.1.1.3.3 | Verificar documento del Repositorio del Proyecto | milestone | 0d | 2017-08-05 A | 2017-08-05 A | 13 | 100% |  |  | start no earlier than 2017-08-05 | GESTOR DE PROYECTO |  |  |  |  |
| 15 | 1.1.1.3.4 | Definir Alcance del Proyecto | milestone | 0d | 2017-08-05 A | 2017-08-05 A | 14 | 100% |  |  |  | EQUIPO DE TRABAJO |  |  |  |  |
| 16 | 1.1.1.4 | Estructurar Ms Project | milestone | 0d | 2017-08-06 A | 2017-08-06 A | 7 | 100% |  |  | start no earlier than 2017-08-06 | GESTOR DE PROYECTO; LÍDER TÉCNICO |  |  |  |  |
| 17 | 1.1.1.5 | **Enunciado de Trabajo** |  | 13d | 2017-08-07 A | 2017-08-23 A |  | 100% |  |  |  |  | 56h | 56h | 2,480 | 2,480 |
| 18 | 1.1.1.5.1 | Elaborar Enunciado de Trabajo |  | 2d | 2017-08-07 A | 2017-08-08 A | 7, 16 | 100% |  |  | start no earlier than 2017-08-07 | GESTOR DE PROYECTO; LÍDER TÉCNICO | 32h | 32h | 1,280 | 1,280 |
| 19 | 1.1.1.5.2 | Verificar Enunciado de Trabajo |  | 1d | 2017-08-09 A | 2017-08-09 A | 18 | 100% |  |  | start no earlier than 2017-08-09 | GESTOR DE PROYECTO; CLIENTE | 8h | 8h | 400 | 400 |
| 20 | 1.1.1.5.3 | Actualizar Enunciado de Trabajo |  | 2d | 2017-08-16 A | 2017-08-17 A | 19 | 100% |  |  | start no earlier than 2017-08-16 | GESTOR DE PROYECTO; LÍDER TÉCNICO | 16h | 16h | 800 | 800 |
| 21 | 1.1.1.5.4 | Verificar Actualización de Enunciado de Trabajo | milestone | 0d | 2017-08-23 A | 2017-08-23 A | 20 | 100% |  |  |  | GESTOR DE PROYECTO; CLIENTE |  |  |  |  |
| 22 | 1.1.1.6 | **Acta de Reunion 4** |  | 0d | 2017-08-18 A | 2017-08-18 A |  | 100% |  |  |  |  |  |  |  |  |
| 23 | 1.1.1.6.1 | Asignar tareas según roles | milestone | 0d | 2017-08-18 A | 2017-08-18 A | 16 | 100% |  |  | start no earlier than 2017-08-18 | GESTOR DE PROYECTO |  |  |  |  |
| 24 | 1.1.1.6.2 | Elaborar el modelo de caso de uso | milestone | 0d | 2017-08-18 A | 2017-08-18 A | 17 | 100% |  |  | start no earlier than 2017-08-18 | ANALISTA; DISEÑADOR |  |  |  |  |
| 25 | 1.1.1.6.3 | Verificación y actualización del Ms Project | milestone | 0d | 2017-08-18 A | 2017-08-18 A | 11 | 100% |  |  | start no earlier than 2017-08-18 | GESTOR DE PROYECTO |  |  |  |  |
| 26 | 1.1.1.6.4 | Verificar Enunciado de Trabajo | milestone | 0d | 2017-08-18 A | 2017-08-18 A | 11 | 100% |  |  | start no earlier than 2017-08-18 | EQUIPO DE TRABAJO |  |  |  |  |

| ID | WBS | Task | Type | Duration | Start | Finish | Predecessors | Complete | Remaining | Total slack | Constraint | Resources | Work | Actual work | Cost | Actual cost |
| --- | --- | --- | --- | --- | --- | --- | --- | --- | --- | --- | --- | --- | --- | --- | --- | --- |
| 27 | 1.1.1.7 | **Acta de Reunion 5** |  | 0d | 2017-08-31 A | 2017-08-31 A |  | 100% |  |  |  |  |  |  |  |  |
| 28 | 1.1.1.7.1 | Validar enunciado de trabajo | milestone | 0d | 2017-08-31 A | 2017-08-31 A | 17 | 100% |  |  | start no earlier than 2017-08-31 | GESTOR DE PROYECTO; CLIENTE |  |  |  |  |
| 29 | 1.1.1.7.2 | Validar plan de proyecto | milestone | 0d | 2017-08-31 A | 2017-08-31 A | 37 | 100% |  |  | start no earlier than 2017-08-31 | GESTOR DE PROYECTO; CLIENTE |  |  |  |  |
| 30 | 1.1.1.8 | **Acta de Reunion 6** |  | 0d | 2017-09-01 A | 2017-09-01 A |  | 100% |  |  |  |  |  |  |  |  |
| 31 | 1.1.1.8.1 | Asignar Tareas | milestone | 0d | 2017-09-01 A | 2017-09-01 A | 27 | 100% |  |  | start no earlier than 2017-09-01 | EQUIPO DE TRABAJO; GESTOR DE PROYECTO |  |  |  |  |
| 32 | 1.1.1.8.2 | Actualizar Documentos | milestone | 0d | 2017-09-01 A | 2017-09-01 A | 31 | 100% |  |  |  | EQUIPO DE TRABAJO |  |  |  |  |
| 33 | 1.1.1.9 | **Acta de Reunion 7** |  | 0d | 2017-09-20 A | 2017-09-20 A |  | 100% |  |  |  |  |  |  |  |  |
| 34 | 1.1.1.9.1 | Validar Documento de Arquitectura del Software | milestone | 0d | 2017-09-20 A | 2017-09-20 A | 89 | 100% |  |  | start no earlier than 2017-09-20 | CLIENTE; GESTOR DE PROYECTO |  |  |  |  |
| 35 | 1.1.1.9.2 | Validar Documento de Diseño Detallado del Software | milestone | 0d | 2017-09-20 A | 2017-09-20 A | 83 | 100% |  |  | start no earlier than 2017-09-20 | CLIENTE; GESTOR DE PROYECTO |  |  |  |  |
| 36 | 1.1.2 | **Ejecución del Plan de Proyecto** |  | 24.5d | 2017-08-21 A | 2017-09-22 A |  | 100% |  |  |  |  | 80h | 80h | 3,200 | 3,200 |
| 37 | 1.1.2.1 | **Plan de Proyecto** |  | 24.5d | 2017-08-21 A | 2017-09-22 A |  | 100% |  |  |  |  | 80h | 80h | 3,200 | 3,200 |
| 38 | 1.1.2.1.1 | Elaborar Plan de Proyecto |  | 4d | 2017-08-21 A | 2017-08-23 A | 17 | 100% |  |  | finish no earlier than 2017-08-23 | GESTOR DE PROYECTO; LÍDER TÉCNICO | 64h | 64h | 2,560 | 2,560 |
| 39 | 1.1.2.1.2 | Verificar Plan de Proyecto | milestone | 0d | 2017-08-25 A | 2017-08-25 A | 38 | 100% |  |  | finish no earlier than 2017-08-25 | GESTOR DE PROYECTO; CLIENTE |  |  |  |  |
| 40 | 1.1.2.1.3 | Actualizar Plan de Proyecto |  | 1d | 2017-09-22 A | 2017-09-22 A | 39 | 100% |  |  |  | GESTOR DE PROYECTO; LÍDER TÉCNICO | 16h | 16h | 640 | 640 |
| 41 | 1.1.3 | Validar Plan de Proyecto y Enunciado de Trabajo | milestone | 0d | 2017-08-31 A | 2017-08-31 A | 21, 39 | 100% |  |  | start no earlier than 2017-08-31 | CLIENTE; GESTOR DE PROYECTO |  |  |  |  |
| 42 | 1.1.4 | **Evaluación y Control del Proyecto** |  | 22d | 2017-08-24 A | 2017-09-25 A |  | 100% |  |  |  |  |  |  |  |  |
| 43 | 1.1.4.1 | Elaborar Documento Reporte de Avances | milestone | 0d | 2017-08-24 A | 2017-08-24 A |  | 100% |  |  | start no earlier than 2017-08-24 | GESTOR DE PROYECTO |  |  |  |  |
| 44 | 1.1.4.2 | Actualizar Documento Reporte de Avances | milestone | 0d | 2017-09-25 A | 2017-09-25 A |  | 100% |  |  | start no earlier than 2017-09-25 | GESTOR DE PROYECTO |  |  |  |  |
| 45 | 1.1.5 | **Cierre del Proyecto** |  | 1d? | 2017-08-02 | 2017-08-02 |  |  |  | 40d |  |  |  |  |  |  |
| 46 | 1.1.5.1 | Elaborar Manual de Usuario |  | 1d? | 2017-08-02 | 2017-08-02 |  |  |  | 40d |  |  |  |  |  |  |
| 47 | 1.1.5.2 | Entrega de Productos |  | 1d? | 2017-08-02 | 2017-08-02 |  |  |  | 40d |  |  |  |  |  |  |
| 48 | 1.2 | **Implementacion de Software** |  | 40.38d? | 2017-08-02 A | 2017-09-22 |  | 72% | 11.27d? | 0.62d |  |  | 481.7h | 481.7h | 8,465.52 | 8,465.52 |
| 49 | 1.2.1 | **Inicio de Implementación de Software** |  | 0d | 2017-08-25 A | 2017-08-25 A |  | 100% |  |  |  |  |  |  |  |  |
| 50 | 1.2.1.1 | Revisar Plan de Proyecto | milestone | 0d | 2017-08-25 A | 2017-08-25 A | 37 | 100% |  |  | start no earlier than 2017-08-24 | EQUIPO DE TRABAJO |  |  |  |  |
| 51 | 1.2.1.2 | Asignar Roles de acuerdo al Plan de Proyecto | milestone | 0d | 2017-08-25 A | 2017-08-25 A | 50 | 100% |  |  | start no earlier than 2017-08-25 | GESTOR DE PROYECTO |  |  |  |  |

| ID | WBS | Task | Type | Duration | Start | Finish | Predecessors | Complete | Remaining | Total slack | Constraint | Resources | Work | Actual work | Cost | Actual cost |
| --- | --- | --- | --- | --- | --- | --- | --- | --- | --- | --- | --- | --- | --- | --- | --- | --- |
| 52 | 1.2.2 | **Análisis de Requisitos de Software** |  | 15d | 2017-08-19 A | 2017-09-08 A |  | 100% |  |  |  |  | 193.7h | 193.7h | 3,425.53 | 3,425.53 |
| 53 | 1.2.2.1 | **Modelo de Casos de Uso** |  | 1d | 2017-08-19 A | 2017-08-20 A |  | 100% |  |  |  |  | 32h | 32h | 560 | 560 |
| 54 | 1.2.2.1.1 | Diseñar y Estructurar el Modelo de Casos de Uso |  | 1d | 2017-08-19 A | 2017-08-19 A | 17, 37 | 100% |  |  | finish no earlier than 2017-08-23 | ANALISTA; DISEÑADOR | 16h | 16h | 280 | 280 |
| 55 | 1.2.2.1.2 | Actualizar el Modelo de Casos de Uso |  | 1d | 2017-08-19 A | 2017-08-20 A | 54 | 100% |  |  |  | ANALISTA; DISEÑADOR | 16h | 16h | 280 | 280 |
| 56 | 1.2.2.2 | **Documento Especificación de Casos de Uso** |  | 11d | 2017-08-24 A | 2017-09-08 A |  | 100% |  |  |  |  | 97.7h | 97.7h | 1,745.53 | 1,745.53 |
| 57 | 1.2.2.2.1 | Elaborar la Especificación de Casos de Uso |  | 3d | 2017-08-24 A | 2017-08-25 A | 54, 65 | 100% |  |  |  | ANALISTA; DISEÑADOR | 33.7h | 33.7h | 625.52 | 625.52 |
| 58 | 1.2.2.2.2 | Verificar Especificación de Casos de Uso | milestone | 0d | 2017-08-25 A | 2017-08-25 A | 57 | 100% |  |  | start no earlier than 2017-08-25 | CLIENTE; GESTOR DE PROYECTO |  |  |  |  |
| 59 | 1.2.2.2.3 | Actualizar Especificación de Casos de Uso |  | 2d | 2017-08-29 A | 2017-08-30 A | 58 | 100% |  |  | start no earlier than 2017-08-29 | ANALISTA; DISEÑADOR | 32h | 32h | 560 | 560 |
| 60 | 1.2.2.2.4 | Verificar Actualización de ECUs | milestone | 0d | 2017-08-31 A | 2017-08-31 A | 59 | 100% |  |  | start no earlier than 2017-08-31 | CLIENTE; GESTOR DE PROYECTO |  |  |  |  |
| 61 | 1.2.2.2.5 | Validar Especificación de Casos de Uso | milestone | 0d | 2017-08-31 A | 2017-08-31 A | 60 | 100% |  |  | start no earlier than 2017-08-02 | CLIENTE; GESTOR DE PROYECTO |  |  |  |  |
| 62 | 1.2.2.2.6 | Actualizar la Especificacion de Casos de Uso |  | 2d | 2017-09-01 A | 2017-09-02 A | 61 | 100% |  |  |  | ANALISTA; DISEÑADOR | 32h | 32h | 560 | 560 |
| 63 | 1.2.2.2.7 | Validar Especificación de Casos de Uso | milestone | 0d | 2017-09-08 A | 2017-09-08 A | 62 | 100% |  |  | start no earlier than 2017-09-08 | CLIENTE; GESTOR DE PROYECTO |  |  |  |  |
| 64 | 1.2.2.3 | **Especificacion de Requisitos del Software** |  | 5d | 2017-08-24 A | 2017-08-31 A |  | 100% |  |  |  |  | 64h | 64h | 1,120 | 1,120 |
| 65 | 1.2.2.3.1 | Elaborar Priorización de Casos de Uso | milestone | 0d | 2017-08-24 A | 2017-08-24 A | 54 | 100% |  |  |  | ANALISTA |  |  |  |  |
| 66 | 1.2.2.3.2 | Elaborar Documento de SRS |  | 2d | 2017-08-24 A | 2017-08-26 A | 57 | 100% |  |  |  | ANALISTA; DISEÑADOR | 32h | 32h | 560 | 560 |
| 67 | 1.2.2.3.3 | Verificar Documento de SRS | milestone | 0d | 2017-08-25 A | 2017-08-25 A | 66 | 100% |  |  |  | ANALISTA; GESTOR DE PROYECTO |  |  |  |  |
| 68 | 1.2.2.3.4 | Actualizar Documento SRS |  | 2d | 2017-08-29 A | 2017-08-30 A | 67 | 100% |  |  | start no earlier than 2017-08-29 | ANALISTA; DISEÑADOR | 32h | 32h | 560 | 560 |
| 69 | 1.2.2.3.5 | Verificar Actualización de Documento SRS | milestone | 0d | 2017-08-31 A | 2017-08-31 A | 68 | 100% |  |  | start no earlier than 2017-08-31 | CLIENTE; GESTOR DE PROYECTO |  |  |  |  |
| 70 | 1.2.2.3.6 | Validar Documento de SRS | milestone | 0d | 2017-08-31 A | 2017-08-31 A | 69 | 100% |  |  |  | CLIENTE; GESTOR DE PROYECTO |  |  |  |  |
| 71 | 1.2.3 | **Arquitectura y Diseño Detallado de Software** |  | 40.38d? | 2017-08-02 A | 2017-09-22 |  | 95% | 2.13d? | 0.62d |  |  | 288h | 288h | 5,040 | 5,040 |
| 72 | 1.2.3.1 | Elaborar Registro de Trazabilidad |  | 1d | 2017-08-31 A | 2017-08-31 A | 64 | 100% |  |  | start no earlier than 2017-08-25 | ANALISTA; DISEÑADOR | 16h | 16h | 280 | 280 |
| 73 | 1.2.3.2 | Actualizar Registro de Trazabilidad |  | 1d | 2017-09-12 A | 2017-09-12 A | 72 | 100% |  |  |  | ANALISTA; DISEÑADOR | 16h | 16h | 280 | 280 |
| 74 | 1.2.3.3 | Actualizar Registro de Trazabilidad |  | 1d | 2017-09-20 A | 2017-09-20 A | 73 | 100% |  |  |  | ANALISTA; DISEÑADOR | 16h | 16h | 280 | 280 |
| 75 | 1.2.3.4 | Actualizar Registro de Trazabilidad |  | 1d? | 2017-08-02 | 2017-08-02 |  |  |  | 40d |  |  |  |  |  |  |

| ID | WBS | Task | Type | Duration | Start | Finish | Predecessors | Complete | Total slack | Constraint | Resources | Work | Actual work | Cost | Actual cost |
| --- | --- | --- | --- | --- | --- | --- | --- | --- | --- | --- | --- | --- | --- | --- | --- |
| 76 | 1.2.3.5 | **Diseño de Casos de Uso** |  | 6.38d | 2017-09-14 A | 2017-09-22 A |  | 100% |  |  |  | 80h | 80h | 1,400 | 1,400 |
| 77 | 1.2.3.5.1 | Analizar y Diseñar el Diagrama de Secuencia |  | 5d | 2017-09-14 A | 2017-09-22 A | 78 | 100% |  |  | ANALISTA; DISEÑADOR | 80h | 80h | 1,400 | 1,400 |
| 78 | 1.2.3.6 | **Documento Diseño Detallado del Software** |  | 9d | 2017-09-07 A | 2017-09-20 A |  | 100% |  |  |  | 80h | 80h | 1,400 | 1,400 |
| 79 | 1.2.3.6.1 | Elaborar Documento Diseño Detallado del Software |  | 3d | 2017-09-07 A | 2017-09-09 A | 56 | 100% |  |  | ANALISTA; DISEÑADOR | 48h | 48h | 840 | 840 |
| 80 | 1.2.3.6.2 | Verificar Documento Diseño detallado del Software | milestone | 0d | 2017-09-15 A | 2017-09-15 A | 79 | 100% |  | start no earlier than 2017-09-15 | GESTOR DE PROYECTO |  |  |  |  |
| 81 | 1.2.3.6.3 | Actualizar Documento Diseño Detallado del Software |  | 2d | 2017-09-16 A | 2017-09-17 A | 80 | 100% |  | start no earlier than 2017-08-02 | ANALISTA; DISEÑADOR | 32h | 32h | 560 | 560 |
| 82 | 1.2.3.6.4 | Verificar Documento Diseño detallado del Software | milestone | 0d | 2017-09-19 A | 2017-09-19 A | 81 | 100% |  | start no earlier than 2017-08-19 | GESTOR DE PROYECTO |  |  |  |  |
| 83 | 1.2.3.6.5 | Validar Documento Diseño detallado del Software | milestone | 0d | 2017-09-20 A | 2017-09-20 A | 82 | 100% |  | start no earlier than 2017-09-20 | CLIENTE; GESTOR DE PROYECTO |  |  |  |  |
| 84 | 1.2.3.7 | **Documento de Arquitectura del Software** |  | 26d | 2017-08-16 A | 2017-09-20 A |  | 100% |  |  |  | 80h | 80h | 1,400 | 1,400 |
| 85 | 1.2.3.7.1 | Elaborar Documento de Arquitectura del Software |  | 3d | 2017-09-07 A | 2017-09-09 A | 56 | 100% |  |  | ANALISTA; DISEÑADOR | 48h | 48h | 840 | 840 |
| 86 | 1.2.3.7.2 | Verificar Documento de Arquitectura del Software | milestone | 0d | 2017-09-15 A | 2017-09-15 A | 85 | 100% |  | start no earlier than 2017-09-15 | GESTOR DE PROYECTO |  |  |  |  |
| 87 | 1.2.3.7.3 | Actualizar Documento de Arquitectura del Software |  | 2d | 2017-08-16 A | 2017-09-15 A | 86 | 100% |  |  | ANALISTA; DISEÑADOR | 32h | 32h | 560 | 560 |
| 88 | 1.2.3.7.4 | Verificar Documento de Arquitectura del Software | milestone | 0d | 2017-09-19 A | 2017-09-19 A | 87 | 100% |  | start no earlier than 2017-09-19 | GESTOR DE PROYECTO |  |  |  |  |
| 89 | 1.2.3.7.5 | Validar Documento de Arquitectura del Software | milestone | 0d | 2017-09-20 A | 2017-09-20 A | 88 | 100% |  | start no earlier than 2017-09-20 | CLIENTE; GESTOR DE PROYECTO |  |  |  |  |
| 90 | 1.2.4 | **Construcción de Software** |  | 1d? | 2017-08-02 | 2017-08-02 |  |  | 40d |  |  |  |  |  |  |
| 91 | 1.2.4.1 | Elaborar Base de datos |  | 1d? | 2017-08-02 | 2017-08-02 |  |  | 40d |  |  |  |  |  |  |
| 92 | 1.2.4.2 | Comenzar elaboracion del Softwarte |  | 1d? | 2017-08-02 | 2017-08-02 |  |  | 40d |  |  |  |  |  |  |
| 93 | 1.2.4.3 | Actualizar Software |  | 1d? | 2017-08-02 | 2017-08-02 |  |  | 40d |  |  |  |  |  |  |
| 94 | 1.2.5 | **Integración y Pruebas de Software** |  | 1d? | 2017-08-02 | 2017-08-02 |  |  | 40d |  |  |  |  |  |  |
| 95 | 1.2.5.1 | Elaborar Casos de Prueba |  | 1d? | 2017-08-02 | 2017-08-02 |  |  | 40d |  |  |  |  |  |  |
| 96 | 1.2.5.2 | Smoke testing en el Software |  | 1d? | 2017-08-02 | 2017-08-02 |  |  | 40d |  |  |  |  |  |  |
| 97 | 1.2.5.3 | Volume testing en el Software |  | 1d? | 2017-08-02 | 2017-08-02 |  |  | 40d |  |  |  |  |  |  |
| 98 | 1.2.5.4 | Actualizar el Software por corecciones |  | 1d? | 2017-08-02 | 2017-08-02 |  |  | 40d |  |  |  |  |  |  |
| 99 | 1.2.5.5 | Reggression testing en el Software |  | 1d? | 2017-08-02 | 2017-08-02 |  |  | 40d |  |  |  |  |  |  |
| 100 | 1.2.5.6 | Integration testing en el Software |  | 1d? | 2017-08-02 | 2017-08-02 |  |  | 40d |  |  |  |  |  |  |

| ID | WBS | Task | Duration | Start | Finish | Total slack |
| --- | --- | --- | --- | --- | --- | --- |
| 101 | 1.2.6 | **Entrega de Productos** | 1d? | 2017-08-02 | 2017-08-02 | 40d |
| 102 | 1.2.6.1 | Elaborar manual de Usuario | 1d? | 2017-08-02 | 2017-08-02 | 40d |
| 103 | 1.2.6.2 | Entrega de Productos | 1d? | 2017-08-02 | 2017-08-02 | 40d |
